# Children's Gourmet Cookbook

Schedule from MS Project, 2025-02-03 to 2025-06-26, costs in $, A marks actual dates.

## Calendars

- Standard: Mon-Fri 08:00-12:00, 13:00-17:00; Sat-Sun off.
- Monday-Wednesday: Mon-Wed 08:00-12:00, 13:00-17:00; Thu-Sun off.

## Resources

| Resource | Rate |
| --- | --- |
| John Evans | 62 |
| Katie Jordan | 48 |
| Robin Wood | 44 |
| William Flash | 55 |
| Carole Poland | 52.5 |
| Printing Service |  |
| Color Setting Services |  |
| Copyeditors |  |

## Schedule

| ID | WBS | Task | Type | Duration | Start | Finish | Predecessors | Complete | Remaining | Baseline start | Baseline finish | Baseline duration | Total slack | Free slack | Calendar | Resources | Work | Actual work | Cost | Baseline cost | Actual cost |
| --- | --- | --- | --- | --- | --- | --- | --- | --- | --- | --- | --- | --- | --- | --- | --- | --- | --- | --- | --- | --- | --- |
| 1 | 1 | **Acquisition** |  | 25d | 2025-02-03 A | 2025-03-07 A |  | 100% |  | 2025-02-03 | 2025-03-07 | 25d |  |  |  |  | 200h | 200h | 10,500 | 10,500 | 10,500 |
| 2 | 1.1 | Manuscript received | milestone | 0d | 2025-02-03 A | 2025-02-03 A |  | 100% |  | 2025-02-03 | 2025-02-03 | 0d |  |  |  | Carole Poland |  |  |  |  |  |
| 3 | 1.2 | Content edit |  | 25d | 2025-02-03 A | 2025-03-07 A | 2 | 100% |  | 2025-02-03 | 2025-03-07 | 25d |  |  |  | Carole Poland | 200h | 200h | 10,500 | 10,500 | 10,500 |
| 4 | 1.3 | Handoff to Editorial | milestone | 0d | 2025-03-07 A | 2025-03-07 A | 3 | 100% |  | 2025-03-07 | 2025-03-07 | 0d |  |  |  | Carole Poland |  |  |  |  |  |
| 5 | 2 | **Editorial** |  | 30d | 2025-03-10 A | 2025-04-18 | 1 | 83% | 5d | 2025-03-10 | 2025-04-18 | 30d | 0d |  |  |  | 240h | 200h | 3,520 | 3,520 | 1,760 |
| 6 | 2.1 | Organize manuscript for copyedit |  | 5d | 2025-03-10 A | 2025-03-14 A |  | 100% |  | 2025-03-10 | 2025-03-14 | 5d |  |  |  | Robin Wood | 40h | 40h | 1,760 | 1,760 | 1,760 |
| 7 | 2.2 | Copyedit |  | 20d | 2025-03-17 A | 2025-04-11 A | 6 | 100% |  | 2025-03-17 | 2025-04-11 | 20d |  |  |  | Copyeditors | 160h | 160h |  |  |  |
| 8 | 2.3 | Copyedit incorp |  | 5d | 2025-04-14 | 2025-04-18 | 7 |  |  | 2025-04-14 | 2025-04-18 | 5d | 0d |  |  | Robin Wood | 40h |  | 1,760 | 1,760 |  |
| 9 | 2.4 | Handoff to Production | milestone | 0d | 2025-04-18 | 2025-04-18 | 8 |  |  | 2025-04-18 | 2025-04-18 | 0d | 0d |  |  | Robin Wood |  |  |  |  |  |
| 10 | 3 | **Design and Production** |  | 20d | 2025-03-10 | 2025-04-04 | 5SS |  |  | 2025-03-10 | 2025-04-04 | 20d | 10d |  |  |  | 320h |  | 16,160 | 16,160 |  |
| 11 | 3.1 | Cover design |  | 5d | 2025-03-10 | 2025-03-14 |  |  |  | 2025-03-10 | 2025-03-14 | 5d | 10d | 0d |  | William Flash | 40h |  | 2,200 | 2,200 |  |
| 12 | 3.2 | Set pages |  | 10d | 2025-03-17 | 2025-03-28 | 11 |  |  | 2025-03-17 | 2025-03-28 | 10d | 10d | 0d |  | Robin Wood; Katie Jordan | 160h |  | 7,360 | 7,360 |  |
| 13 | 3.3 | Interior illustration design |  | 15d | 2025-03-17 | 2025-04-04 | 12SS |  |  | 2025-03-17 | 2025-04-04 | 15d | 10d |  |  | William Flash | 120h |  | 6,600 | 6,600 |  |
| 14 | 4 | **Pages review** |  | 20d | 2025-04-21 | 2025-05-16 | 10, 5 |  |  | 2025-04-21 | 2025-05-16 | 20d | 0d |  |  |  | 280h |  | 14,580 | 14,580 |  |
| 15 | 4.1 | Proofread and index |  | 10d | 2025-04-21 | 2025-05-02 |  |  |  | 2025-04-21 | 2025-05-02 | 10d | 0d |  |  | John Evans; Katie Jordan | 160h |  | 8,800 | 8,800 |  |
| 16 | 4.2 | Incorporate 1st Pages review |  | 5d | 2025-05-05 | 2025-05-09 | 15 |  |  | 2025-05-05 | 2025-05-09 | 5d | 0d |  |  | Carole Poland | 40h |  | 2,100 | 2,100 |  |
| 17 | 4.3 | Send proofed pages to Production | milestone | 0d | 2025-05-09 | 2025-05-09 | 16 |  |  | 2025-05-09 | 2025-05-09 | 0d | 0d |  |  | Robin Wood |  |  |  |  |  |
| 18 | 4.4 | Enter page corrections and index |  | 5d | 2025-05-12 | 2025-05-16 | 17 |  |  | 2025-05-12 | 2025-05-16 | 5d | 0d |  |  | Katie Jordan; Robin Wood | 80h |  | 3,680 | 3,680 |  |
| 19 | 5 | **Color prep and printing** |  | 29d | 2025-05-19 | 2025-06-26 | 14 |  |  | 2025-05-19 | 2025-06-26 | 29d | 0d |  |  |  | 208h |  | 5,420 | 5,420 |  |
| 20 | 5.1 | Send to color house |  | 1d | 2025-05-19 | 2025-05-19 |  |  |  | 2025-05-19 | 2025-05-19 | 1d | 0d |  | Monday-Wednesday | Carole Poland | 8h |  | 420 | 420 |  |
| 21 | 5.2 | Generate proofs |  | 5d | 2025-05-20 | 2025-05-26 | 20 |  |  | 2025-05-20 | 2025-05-26 | 5d | 0d |  |  | Color Setting Services | 40h |  | 5,000 | 5,000 |  |
| 22 | 5.3 | Print and ship |  | 20d | 2025-05-30 | 2025-06-26 | 21FS+3d |  |  | 2025-05-30 | 2025-06-26 | 20d | 0d |  |  | Printing Service | 160h |  |  |  |  |
