# Children's book schedule

Schedule from MS Project, 2025-04-14 to 2025-11-27, costs in $.
Lucerne Publishing

## Calendars

- Standard: Mon-Fri 08:00-12:00, 13:00-17:00; Sat-Sun off.

## Resources

| Resource | Rate | Notes |
| --- | --- | --- |
| Carole Poland | 52.5 |  |
| Color Setting Services |  |  |
| Copyeditors | 45 |  |
| Dan Jump | 75.5 |  |
| Hany Morcos | 38.75 |  |
| Jane Dow | 55 |  |
| John Evans | 69.5 |  |
| Jun Cao | 42 |  |
| Katie Jordan | 48 |  |
| Luis Sousa | 70 |  |
| Printing Service |  |  |
| Robin Wood | 44 |  |
| Sharon Salavaria | 27.5 | Sharon's standard pay rate is adjusted for her half-time work schedule. |
| Tad Orman |  |  |
| Toby Nixon | 67.5 | Toby worked on launch campaigns for Toni Poe's previous two books. |
| Travel |  |  |
| Vikas Jain | 22 |  |
| William Flash |  |  |
| Zac Woodall | 55 |  |

## Schedule

| ID | WBS | Task | Type | Duration | Start | Finish | Predecessors | Total slack | Resources | Work | Cost |
| --- | --- | --- | --- | --- | --- | --- | --- | --- | --- | --- | --- |
| 1 | 1 | **Acquisition** |  | 25d | 2025-04-14 | 2025-05-16 |  | 0d |  | 220h | 7,200 |
| 2 | 1.1 | Manuscript received | milestone | 0d | 2025-04-14 | 2025-04-14 |  | 0d |  |  |  |
| 3 | 1.2 | Content edit |  | 15d | 2025-04-14 | 2025-05-02 | 2 | 0d | Carole Poland | 120h | 6,300 |
| 4 | 1.3 | Author review of content edit |  | 10d | 2025-05-05 | 2025-05-16 | 3 | 0d | Tad Orman; Copyeditors [25%] | 100h | 900 |
| 5 | 1.4 | Handoff to Editorial | milestone | 0d | 2025-05-16 | 2025-05-16 | 4 | 0d | Carole Poland |  |  |
| 6 | 2 | **Editorial** |  | 35d | 2025-05-19 | 2025-07-04 | 1 | 0d |  | 420h | 14,800 |
| 7 | 2.1 | Organize manuscript for copyedit |  | 5d | 2025-05-19 | 2025-05-23 |  | 0d | Hany Morcos | 40h | 1,550 |
| 8 | 2.2 | Copyedit |  | 15d | 2025-05-26 | 2025-06-13 | 7 | 0d | Copyeditors [200%] | 240h | 10,800 |
| 9 | 2.3 | Author review of copyedit |  | 10d | 2025-06-16 | 2025-06-27 | 8 | 0d | Tad Orman; Copyeditors [25%] | 100h | 900 |
| 10 | 2.4 | Copyedit incorp |  | 5d | 2025-06-30 | 2025-07-04 | 9 | 0d | Hany Morcos | 40h | 1,550 |
| 11 | 2.5 | Handoff to Production | milestone | 0d | 2025-07-04 | 2025-07-04 | 10 | 0d | Hany Morcos |  |  |
| 12 | 3 | **Design and Production** |  | 63d | 2025-07-07 | 2025-10-01 | 6 | 0d |  | 644h | 31,170 |
| 13 | 3.1 | Set pages |  | 15d | 2025-07-07 | 2025-07-25 |  | 0d | Jane Dow | 120h | 6,600 |
| 14 | 3.2 | Interior illustration design |  | 15d | 2025-07-28 | 2025-08-15 | 13 | 0d | Luis Sousa | 120h | 8,400 |
| 15 | 3.3 | **1st Pages review** |  | 25d | 2025-08-18 | 2025-09-19 | 14 | 0d |  | 220h | 7,450 |
| 16 | 3.3.1 | Proofread and index |  | 10d | 2025-08-18 | 2025-08-29 |  | 0d | Tad Orman; Copyeditors | 100h | 900 |
| 17 | 3.3.2 | Incorporate 1st Pages review |  | 5d | 2025-09-01 | 2025-09-05 | 16 | 0d | Hany Morcos | 40h | 1,550 |
| 18 | 3.3.3 | Send proofed pages to Production | milestone | 0d | 2025-09-05 | 2025-09-05 | 17 | 0d | Hany Morcos |  |  |
| 19 | 3.3.4 | Enter page corrections and index |  | 5d | 2025-09-08 | 2025-09-12 | 18 | 0d | Jane Dow | 40h | 2,200 |
| 20 | 3.3.5 | Cover design |  | 5d | 2025-09-15 | 2025-09-19 | 19 | 0d | Luis Sousa | 40h | 2,800 |
| 21 | 3.4 | **2nd Pages review** |  | 8d | 2025-09-22 | 2025-10-01 |  | 0d |  | 128h | 5,920 |
| 22 | 3.4.1 | Proof and review |  | 4d | 2025-09-22 | 2025-09-25 | 20 | 0d | Hany Morcos | 32h | 1,240 |
| 23 | 3.4.2 | Send proofed pages to Production | milestone | 0d | 2025-09-25 | 2025-09-25 | 22 | 0d | Hany Morcos |  |  |
| 24 | 3.4.3 | Final review |  | 4d | 2025-09-26 | 2025-10-01 | 23 | 0d | Jane Dow; Hany Morcos; Carole Poland | 96h | 4,680 |

| ID | WBS | Task | Duration | Start | Finish | Predecessors | Total slack | Free slack | Resources | Work | Cost |
| --- | --- | --- | --- | --- | --- | --- | --- | --- | --- | --- | --- |
| 25 | 3.5 | **Design book's companion website** | 5d | 2025-09-22 | 2025-09-26 |  | 3d |  |  | 56h | 2,800 |
| 26 | 3.5.1 | Create mockup | 3d | 2025-09-22 | 2025-09-24 | 20 | 3d | 0d | Luis Sousa | 24h | 1,680 |
| 27 | 3.5.2 | Review with author | 2d | 2025-09-25 | 2025-09-26 | 26 | 3d |  | Luis Sousa; Tad Orman | 32h | 1,120 |
| 28 | 4 | **Color prep and printing** | 41d | 2025-10-02 | 2025-11-27 |  | 0d |  |  | 328h | 310 |
| 29 | 4.1 | Send to color house | 1d | 2025-10-02 | 2025-10-02 | 24, 27 | 0d |  | Hany Morcos | 8h | 310 |
| 30 | 4.2 | Generate proofs | 10d | 2025-10-03 | 2025-10-16 | 29 | 0d |  | Color Setting Services | 80h |  |
| 31 | 4.3 | Print and ship | 30d | 2025-10-17 | 2025-11-27 | 30 | 0d |  | Printing Service | 240h |  |
