# Children's book schedule

Schedule from MS Project, 2025-04-14 to 2025-11-24, costs in $.
Lucerne Publishing

## Calendars

- Standard: Mon-Fri 08:00-12:00, 13:00-17:00; Sat-Sun off.
- Mon-Wed Task Calendar: Mon-Wed 08:00-12:00, 13:00-17:00; Thu-Sun off.

## Resources

| Resource | Rate | Notes |
| --- | --- | --- |
| Carole Poland | 52.5 |  |
| Copyeditors | 45 |  |
| Dan Jump | 75.5 |  |
| Hany Morcos | 38.75 |  |
| Jane Dow | 55 |  |
| John Evans | 69.5 |  |
| Jun Cao | 42 |  |
| Katie Jordan | 48 |  |
| Luis Sousa | 70 |  |
| Printing Service |  |  |
| Robin Wood | 44 |  |
| Sharon Salavaria | 27.5 | Sharon's standard pay rate is adjusted for her half-time work schedule. |
| Toby Nixon | 67.5 |  |
| Travel |  |  |
| Vikas Jain | 22 |  |
| William Flash |  |  |
| Zac Woodall | 55 |  |
| Tad Orman |  |  |
| Color Setting Services |  |  |

## Schedule

| ID | WBS | Task | Type | Duration | Start | Finish | Predecessors | Total slack | Free slack | Constraint | Deadline | Resources | Work | Cost |
| --- | --- | --- | --- | --- | --- | --- | --- | --- | --- | --- | --- | --- | --- | --- |
| 1 | 1 | **Editorial staff meeting** |  | 60.12d | 2025-04-14 08:00 | 2025-07-07 09:00 |  | 100.88d |  |  |  |  | 39h | 1,732.25 |
| 2 | 1.1 | Editorial staff meeting 1 |  | 1h | 2025-04-14 08:00 | 2025-04-14 09:00 |  | 160.88d |  | start no earlier than 2025-04-14 08:00 |  | Carole Poland; Jun Cao; Hany Morcos | 3h | 133.25 |
| 3 | 1.2 | Editorial staff meeting 2 |  | 1h | 2025-04-21 08:00 | 2025-04-21 09:00 |  | 155.88d |  | start no earlier than 2025-04-21 08:00 |  | Carole Poland; Jun Cao; Hany Morcos | 3h | 133.25 |
| 4 | 1.3 | Editorial staff meeting 3 |  | 1h | 2025-04-28 08:00 | 2025-04-28 09:00 |  | 150.88d |  | start no earlier than 2025-04-28 08:00 |  | Carole Poland; Jun Cao; Hany Morcos | 3h | 133.25 |
| 5 | 1.4 | Editorial staff meeting 4 |  | 1h | 2025-05-05 08:00 | 2025-05-05 09:00 |  | 145.88d |  | start no earlier than 2025-05-05 08:00 |  | Carole Poland; Jun Cao; Hany Morcos | 3h | 133.25 |
| 6 | 1.5 | Editorial staff meeting 5 |  | 1h | 2025-05-12 08:00 | 2025-05-12 09:00 |  | 140.88d |  | start no earlier than 2025-05-12 08:00 |  | Carole Poland; Jun Cao; Hany Morcos | 3h | 133.25 |
| 7 | 1.6 | Editorial staff meeting 6 |  | 1h | 2025-05-19 08:00 | 2025-05-19 09:00 |  | 135.88d |  | start no earlier than 2025-05-19 08:00 |  | Carole Poland; Jun Cao; Hany Morcos | 3h | 133.25 |
| 8 | 1.7 | Editorial staff meeting 7 |  | 1h | 2025-05-26 08:00 | 2025-05-26 09:00 |  | 130.88d |  | start no earlier than 2025-05-26 08:00 |  | Carole Poland; Jun Cao; Hany Morcos | 3h | 133.25 |
| 9 | 1.8 | Editorial staff meeting 8 |  | 1h | 2025-06-02 08:00 | 2025-06-02 09:00 |  | 125.88d |  | start no earlier than 2025-06-02 08:00 |  | Carole Poland; Jun Cao; Hany Morcos | 3h | 133.25 |
| 10 | 1.9 | Editorial staff meeting 9 |  | 1h | 2025-06-09 08:00 | 2025-06-09 09:00 |  | 120.88d |  | start no earlier than 2025-06-09 08:00 |  | Carole Poland; Jun Cao; Hany Morcos | 3h | 133.25 |
| 11 | 1.10 | Editorial staff meeting 10 |  | 1h | 2025-06-16 08:00 | 2025-06-16 09:00 |  | 115.88d |  | start no earlier than 2025-06-16 08:00 |  | Carole Poland; Jun Cao; Hany Morcos | 3h | 133.25 |
| 12 | 1.11 | Editorial staff meeting 11 |  | 1h | 2025-06-23 08:00 | 2025-06-23 09:00 |  | 110.88d |  | start no earlier than 2025-06-23 08:00 |  | Carole Poland; Jun Cao; Hany Morcos | 3h | 133.25 |
| 13 | 1.12 | Editorial staff meeting 12 |  | 1h | 2025-06-30 08:00 | 2025-06-30 09:00 |  | 105.88d |  | start no earlier than 2025-06-30 08:00 |  | Carole Poland; Jun Cao; Hany Morcos | 3h | 133.25 |
| 14 | 1.13 | Editorial staff meeting 13 |  | 1h | 2025-07-07 08:00 | 2025-07-07 09:00 |  | 100.88d |  | start no earlier than 2025-07-07 08:00 |  | Carole Poland; Jun Cao; Hany Morcos | 3h | 133.25 |
| 15 | 2 | **Acquisition** |  | 28d | 2025-04-14 08:00 | 2025-05-21 17:00 |  | 1.5d | 0d |  |  |  | 280h | 9,900 |
| 16 | 2.1 | Manuscript received | milestone | 0d | 2025-04-14 08:00 | 2025-04-14 08:00 |  | 1.5d | 0d |  |  |  |  |  |
| 17 | 2.2 | Content edit |  | 15d | 2025-04-14 08:00 | 2025-05-07 17:00 | 16 | 1.5d | 0d |  |  | Carole Poland | 120h | 6,300 |
| 18 | 2.3 | Author review of content edit |  | 10d | 2025-05-08 08:00 | 2025-05-21 17:00 | 17 | 1.5d | 0d |  |  | Tad Orman; Copyeditors | 160h | 3,600 |
| 19 | 2.4 | Handoff to Editorial | milestone | 0d | 2025-05-21 17:00 | 2025-05-21 17:00 | 18 | 1.5d |  |  | 2025-06-04 17:00 | Carole Poland |  |  |
| 20 | 3 | **Editorial** |  | 30d | 2025-05-22 08:00 | 2025-07-02 17:00 | 15 |  |  |  |  |  | 420h | 14,800 |
| 21 | 3.1 | Organize manuscript for copyedit |  | 5d | 2025-05-22 08:00 | 2025-05-28 17:00 |  | 1.5d | 0d |  |  | Hany Morcos | 40h | 1,550 |
| 22 | 3.2 | Copyedit |  | 20d | 2025-05-29 08:00 | 2025-06-25 17:00 | 21 | 1.5d | 0d |  |  | Copyeditors [150%] | 240h | 10,800 |
| 23 | 3.3 | Author review of copyedit |  | 10d | 2025-06-26 08:00 | 2025-07-09 17:00 | 22 | 1.5d | 0d |  |  | Tad Orman; Copyeditors [25%] | 100h | 900 |
| 24 | 3.4 | Copyedit incorp |  | 5d | 2025-07-07 13:00 | 2025-07-14 12:00 | 23FS-2.5% | 1.5d | 0d |  |  | Hany Morcos | 40h | 1,550 |
| 25 | 3.5 | Handoff to Production | milestone | 0d | 2025-07-14 12:00 | 2025-07-14 12:00 | 24 | 1.5d |  |  |  | Hany Morcos |  |  |

| ID | WBS | Task | Type | Duration | Start | Finish | Predecessors | Total slack | Free slack | Constraint | Calendar | Resources | Work | Cost |
| --- | --- | --- | --- | --- | --- | --- | --- | --- | --- | --- | --- | --- | --- | --- |
| 26 | 4 | **Design and Production** |  | 50d | 2025-07-03 08:00 | 2025-09-10 17:00 | 20 | 9d |  |  |  |  | 780h | 38,305 |
| 27 | 4.1 | Set pages |  | 15d | 2025-07-03 08:00 | 2025-07-23 17:00 |  | 9d | 0d |  |  | Jane Dow | 120h | 7,590 |
| 28 | 4.2 | Interior illustration design |  | 15d | 2025-07-03 08:00 | 2025-07-23 17:00 | 27SS | 9d | 1d |  |  | Luis Sousa; Hany Morcos | 240h | 13,050 |
| 29 | 4.3 | **1st Pages review** |  | 25d | 2025-07-24 08:00 | 2025-08-27 17:00 | 28 | 9d | 0d |  |  |  | 220h | 7,780 |
| 30 | 4.3.1 | Proofread and index |  | 10d | 2025-07-24 08:00 | 2025-08-06 17:00 |  | 9d | 0d | start no earlier than 2025-07-21 08:00 |  | Tad Orman; Copyeditors | 100h | 900 |
| 31 | 4.3.2 | Incorporate 1st Pages review |  | 5d | 2025-08-07 08:00 | 2025-08-13 17:00 | 30 | 9d | 0d |  |  | Hany Morcos | 40h | 1,550 |
| 32 | 4.3.3 | Send proofed pages to Production | milestone | 0d | 2025-08-13 17:00 | 2025-08-13 17:00 | 31 | 9d | 0d |  |  | Hany Morcos |  |  |
| 33 | 4.3.4 | Enter page corrections and index |  | 5d | 2025-08-14 08:00 | 2025-08-20 17:00 | 32 | 9d | 0d |  |  | Jane Dow | 40h | 2,530 |
| 34 | 4.3.5 | Cover design |  | 5d | 2025-08-21 08:00 | 2025-08-27 17:00 | 33 | 9d | 0d |  |  | Luis Sousa | 40h | 2,800 |
| 35 | 4.4 | **2nd Pages review** |  | 10d | 2025-08-28 08:00 | 2025-09-10 17:00 |  | 9d | 3d |  |  |  | 120h | 6,155 |
| 36 | 4.4.1 | Proof and review |  | 5d | 2025-08-28 08:00 | 2025-09-03 17:00 | 34 | 9d | 0d |  |  | Hany Morcos | 40h | 1,800 |
| 37 | 4.4.2 | Send proofed pages to Production | milestone | 0d | 2025-09-03 17:00 | 2025-09-03 17:00 | 36 | 9d | 0d |  |  | Hany Morcos |  |  |
| 38 | 4.4.3 | Final review |  | 5d | 2025-09-04 08:00 | 2025-09-10 17:00 | 37 | 9d |  |  |  | Jane Dow; Hany Morcos [50%]; Carole Poland [50%] | 80h | 4,355 |
| 39 | 4.5 | **Design book's companion website** |  | 5d | 2025-08-28 08:00 | 2025-09-03 17:00 | 29 | 14d | 8d |  |  |  | 80h | 3,730 |
| 40 | 4.5.1 | Create mockup |  | 3d | 2025-08-28 08:00 | 2025-09-01 17:00 |  | 14d | 0d |  |  | Luis Sousa; Hany Morcos | 48h | 2,610 |
| 41 | 4.5.2 | Review with author |  | 2d | 2025-09-02 08:00 | 2025-09-03 17:00 | 40 | 14d |  |  |  | Luis Sousa; Tad Orman | 32h | 1,120 |
| 42 | 5 | **Color prep and printing** |  | 50d | 2025-09-16 08:00 | 2025-11-24 17:00 | 39 |  |  |  |  |  | 328h | 5,310 |
| 43 | 5.1 | Send to color house |  | 1d | 2025-09-16 08:00 | 2025-09-16 17:00 | 35 | 4d | 0d |  | Mon-Wed Task Calendar | Hany Morcos | 8h | 310 |
| 44 | 5.2 | Generate proofs |  | 10d | 2025-09-17 08:00 | 2025-09-30 17:00 | 43 | 6d | 0d |  |  | Color Setting Services | 80h | 5,000 |
| 45 | 5.3 | Print and ship |  | 30d | 2025-10-06 08:00 | 2025-11-14 17:00 | 44FS+3d | 6d |  |  |  | Printing Service | 240h |  |
| 46 | 6 | **Book launch prep** |  | 0d? | 2025-04-14 08:00 | 2025-04-14 08:00 |  | 161d |  |  |  |  | 12h | 520 |
| 47 | 6.1 | Launch planning | manual | 1d? | 2025-04-15 08:00 | 2025-04-15 17:00 |  |  |  |  |  | Carole Poland [50%] | 4h | 210 |
| 48 | 6.2 | Assign launch team members | manual | 1d? | 2025-04-15 08:00 | 2025-04-15 17:00 |  |  |  |  |  | Hany Morcos | 8h | 310 |
| 49 | 6.3 | Complete author questionnaire | manual | 1d? | 2025-04-15 08:00 | 2025-04-15 17:00 |  |  |  |  |  |  |  |  |
| 50 | 6.4 | Schedule author interviews | manual | 1d? | 2025-04-15 08:00 | 2025-04-15 17:00 |  |  |  |  |  |  |  |  |
