# Children's Book Schedule

Schedule from MS Project, 2025-04-14 to 2025-12-04, costs in $, A marks actual dates.
Lucerne Publishing

## Calendars

- Standard: Mon-Fri 08:00-12:00, 13:00-17:00; Sat-Sun off.
- Mon-Wed Task Calendar: Mon-Wed 08:00-12:00, 13:00-17:00; Thu-Sun off.

## Resources

| Resource | Group | Unit | Rate |
| --- | --- | --- | --- |
| Carole Poland | Editorial |  | 52.5 |
| Copyeditors | Editorial |  | 45 |
| Dan Jump | Design |  | 75.5 |
| Hany Morcos | Editorial |  | 38.75 |
| Jane Dow | Editorial |  | 55 |
| Jun Cao | Editorial |  | 42 |
| Luis Sousa | Design |  | 70 |
| Printing Service | Production |  |  |
| Travel | Other |  |  |
| Tad Orman | Other |  |  |
| Color Setting Services | Production |  |  |
| Advance proofs | Production | copies | 15 |

## Schedule

| ID | WBS | Task | Type | Duration | Start | Finish | Predecessors | Complete | Remaining | Baseline start | Baseline finish | Baseline duration | Total slack | Free slack | Constraint | Deadline | Resources | Work | Actual work | Cost | Baseline cost | Actual cost | Editorial Focus |
| --- | --- | --- | --- | --- | --- | --- | --- | --- | --- | --- | --- | --- | --- | --- | --- | --- | --- | --- | --- | --- | --- | --- | --- |
| 1 | 1 | **Editorial staff meeting** |  | 60.12d | 2025-04-21 08:00 A | 2025-07-14 09:00 |  | 54% | 27.66d | 2025-04-21 08:00 | 2025-07-14 09:00 | 60.12d | 103.88d |  |  |  |  | 45.5h | 24.57h | 2,223 | 2,223 | 1,200.42 |  |
| 2 | 1.1 | Editorial staff meeting 1 |  | 1h | 2025-04-21 08:00 A | 2025-04-21 09:00 A |  | 100% |  | 2025-04-21 08:00 | 2025-04-21 09:00 | 1h |  |  | start no earlier than 2025-04-21 08:00 |  | Carole Poland; Jun Cao; Hany Morcos; Dan Jump [50%] | 3.5h | 3.5h | 171 | 171 | 171 |  |
| 3 | 1.2 | Editorial staff meeting 2 |  | 1h | 2025-04-28 08:00 A | 2025-04-28 09:00 A |  | 100% |  | 2025-04-28 08:00 | 2025-04-28 09:00 | 1h |  |  | start no earlier than 2025-04-28 08:00 |  | Carole Poland; Jun Cao; Hany Morcos; Dan Jump [50%] | 3.5h | 3.5h | 171 | 171 | 171 |  |
| 4 | 1.3 | Editorial staff meeting 3 |  | 1h | 2025-05-05 08:00 A | 2025-05-05 09:00 A |  | 100% |  | 2025-05-05 08:00 | 2025-05-05 09:00 | 1h |  |  | start no earlier than 2025-05-05 08:00 |  | Carole Poland; Jun Cao; Hany Morcos; Dan Jump [50%] | 3.5h | 3.5h | 171 | 171 | 171 |  |
| 5 | 1.4 | Editorial staff meeting 4 |  | 1h | 2025-05-12 08:00 A | 2025-05-12 09:00 A |  | 100% |  | 2025-05-12 08:00 | 2025-05-12 09:00 | 1h |  |  | start no earlier than 2025-05-12 08:00 |  | Carole Poland; Jun Cao; Hany Morcos; Dan Jump [50%] | 3.5h | 3.5h | 171 | 171 | 171 |  |
| 6 | 1.5 | Editorial staff meeting 5 |  | 1h | 2025-05-19 08:00 A | 2025-05-19 09:00 A |  | 100% |  | 2025-05-19 08:00 | 2025-05-19 09:00 | 1h |  |  | start no earlier than 2025-05-19 08:00 |  | Carole Poland; Jun Cao; Hany Morcos; Dan Jump [50%] | 3.5h | 3.5h | 171 | 171 | 171 |  |
| 7 | 1.6 | Editorial staff meeting 6 |  | 1h | 2025-05-26 08:00 A | 2025-05-26 09:00 A |  | 100% |  | 2025-05-26 08:00 | 2025-05-26 09:00 | 1h |  |  | start no earlier than 2025-05-26 08:00 |  | Carole Poland; Jun Cao; Hany Morcos; Dan Jump [50%] | 3.5h | 3.5h | 171 | 171 | 171 |  |
| 8 | 1.7 | Editorial staff meeting 7 |  | 1h | 2025-06-02 08:00 A | 2025-06-02 09:00 A |  | 100% |  | 2025-06-02 08:00 | 2025-06-02 09:00 | 1h |  |  | start no earlier than 2025-06-02 08:00 |  | Carole Poland; Jun Cao; Hany Morcos; Dan Jump [50%] | 3.5h | 3.5h | 171 | 171 | 171 |  |
| 9 | 1.8 | Editorial staff meeting 8 |  | 1h | 2025-06-09 08:00 A | 2025-06-09 09:00 |  | 2% | 0.98h | 2025-06-09 08:00 | 2025-06-09 09:00 | 1h | 128.88d |  | start no earlier than 2025-06-09 08:00 |  | Carole Poland; Jun Cao; Hany Morcos; Dan Jump [50%] | 3.5h | 0.07h | 171 | 171 | 3.42 |  |
| 10 | 1.9 | Editorial staff meeting 9 |  | 1h | 2025-06-16 08:00 | 2025-06-16 09:00 |  |  |  | 2025-06-16 08:00 | 2025-06-16 09:00 | 1h | 123.88d |  | start no earlier than 2025-06-16 08:00 |  | Carole Poland; Jun Cao; Hany Morcos; Dan Jump [50%] | 3.5h |  | 171 | 171 |  |  |
| 11 | 1.10 | Editorial staff meeting 10 |  | 1h | 2025-06-23 08:00 | 2025-06-23 09:00 |  |  |  | 2025-06-23 08:00 | 2025-06-23 09:00 | 1h | 118.88d |  | start no earlier than 2025-06-23 08:00 |  | Carole Poland; Jun Cao; Hany Morcos; Dan Jump [50%] | 3.5h |  | 171 | 171 |  |  |
| 12 | 1.11 | Editorial staff meeting 11 |  | 1h | 2025-06-30 08:00 | 2025-06-30 09:00 |  |  |  | 2025-06-30 08:00 | 2025-06-30 09:00 | 1h | 113.88d |  | start no earlier than 2025-06-30 08:00 |  | Carole Poland; Jun Cao; Hany Morcos; Dan Jump [50%] | 3.5h |  | 171 | 171 |  |  |
| 13 | 1.12 | Editorial staff meeting 12 |  | 1h | 2025-07-07 08:00 | 2025-07-07 09:00 |  |  |  | 2025-07-07 08:00 | 2025-07-07 09:00 | 1h | 108.88d |  | start no earlier than 2025-07-07 08:00 |  | Carole Poland; Jun Cao; Hany Morcos; Dan Jump [50%] | 3.5h |  | 171 | 171 |  |  |
| 14 | 1.13 | Editorial staff meeting 13 |  | 1h | 2025-07-14 08:00 | 2025-07-14 09:00 |  |  |  | 2025-07-14 08:00 | 2025-07-14 09:00 | 1h | 103.88d |  | start no earlier than 2025-07-14 08:00 |  | Carole Poland; Jun Cao; Hany Morcos; Dan Jump [50%] | 3.5h |  | 171 | 171 |  |  |
| 15 | 2 | **Acquisition** |  | 37d | 2025-04-14 08:00 A | 2025-06-03 17:00 |  | 99% | 0d | 2025-04-14 08:00 | 2025-06-03 17:00 | 37d | 2d | 0d |  |  |  | 468h | 468h | 18,804 | 18,804 | 18,804 |  |
| 16 | 2.1 | Manuscript received | milestone | 0d | 2025-04-14 08:00 | 2025-04-14 08:00 |  |  |  | 2025-04-14 08:00 | 2025-04-14 08:00 | 0d | 39d |  |  |  |  |  |  |  |  |  |  |
| 17 | 2.2 | Content edit |  | 15d | 2025-04-14 08:00 A | 2025-05-08 10:00 A | 16 | 100% |  | 2025-04-14 08:00 | 2025-05-08 10:00 | 15d |  |  |  |  | Carole Poland | 120h | 120h | 6,300 | 6,300 | 6,300 | Full developmental edit |
| 18 | 2.3 | Original art review |  | 10.25d | 2025-05-01 10:00 A | 2025-05-15 12:00 A | 17FS-5d | 100% |  | 2025-05-01 10:00 | 2025-05-15 12:00 | 10.25d |  |  |  |  | Hany Morcos; Jane Dow | 164h | 164h | 8,364 | 8,364 | 8,364 |  |
| 19 | 2.4 | Author review of content edit |  | 13.5d | 2025-05-15 13:00 A | 2025-06-03 17:00 A | 17, 18 | 100% |  | 2025-05-15 13:00 | 2025-06-03 17:00 | 13.5d |  |  |  |  | Tad Orman; Copyeditors | 184h | 184h | 4,140 | 4,140 | 4,140 | Incorp must-fix issues |
| 20 | 2.5 | Handoff to Editorial | milestone | 0d | 2025-06-03 17:00 | 2025-06-03 17:00 | 19 |  |  | 2025-06-03 17:00 | 2025-06-03 17:00 | 0d | 1d |  |  | 2025-06-04 17:00 | Carole Poland |  |  |  |  |  |  |
| 21 | 3 | **Editorial** |  | 29.25d | 2025-06-04 08:00 | 2025-07-15 10:00 | 15 |  |  | 2025-06-04 08:00 | 2025-07-15 10:00 | 29.25d | 2d | 0d |  |  |  | 404h |  | 15,850 | 15,850 |  |  |
| 22 | 3.1 | Organize manuscript for copyedit |  | 5d | 2025-06-04 08:00 | 2025-06-10 17:00 |  |  |  | 2025-06-04 08:00 | 2025-06-10 17:00 | 5d | 2d | 0d |  |  | Hany Morcos; Dan Jump [50%] | 60h |  | 3,060 | 3,060 |  | Address outstanding line edit issues |
| 23 | 3.2 | Copyedit |  | 11.5d | 2025-06-11 08:00 | 2025-06-26 12:00 | 22 |  |  | 2025-06-11 08:00 | 2025-06-26 12:00 | 11.5d | 2d | 0d |  |  | Copyeditors [200%] | 184h |  | 8,280 | 8,280 |  | Style Guide compliance |
| 24 | 3.3 | Author review of copyedit |  | 10d | 2025-06-26 13:00 | 2025-07-10 12:00 | 23 |  |  | 2025-06-26 13:00 | 2025-07-10 12:00 | 10d | 2d | 0d |  |  | Tad Orman; Copyeditors [25%] | 100h |  | 900 | 900 |  | Incorp must-fix issues |
| 25 | 3.4 | Copyedit incorp |  | 5.12d | 2025-07-08 08:00 | 2025-07-15 10:00 | 24FS-2.5% |  |  | 2025-07-08 08:00 | 2025-07-15 10:00 | 5.12d | 2d | 0d |  |  | Carole Poland; Dan Jump [50%] | 60h |  | 3,610 | 3,610 |  | Incorp must-fix issues |
| 26 | 3.5 | Handoff to Production | milestone | 0d | 2025-07-15 10:00 | 2025-07-15 10:00 | 25 |  |  | 2025-07-15 10:00 | 2025-07-15 10:00 | 0d | 2d |  |  |  | Hany Morcos |  |  |  |  |  |  |

| ID | WBS | Task | Type | Duration | Start | Finish | Predecessors | Baseline start | Baseline finish | Baseline duration | Total slack | Free slack | Constraint | Calendar | Resources | Work | Cost | Baseline cost |
| --- | --- | --- | --- | --- | --- | --- | --- | --- | --- | --- | --- | --- | --- | --- | --- | --- | --- | --- |
| 27 | 4 | **Design and Production** |  | 58.25d | 2025-07-15 10:00 | 2025-10-03 12:00 | 21 | 2025-07-15 10:00 | 2025-10-03 12:00 | 58.25d | 0.5d |  |  |  |  | 888h | 46,679 | 46,679 |
| 28 | 4.1 | Set pages |  | 15d | 2025-07-15 10:00 | 2025-08-05 10:00 |  | 2025-07-15 10:00 | 2025-08-05 10:00 | 15d | 2d | 0d |  |  | Jane Dow | 120h | 7,590 | 7,590 |
| 29 | 4.2 | Interior illustration design |  | 15.25d | 2025-07-15 10:00 | 2025-08-05 12:00 | 28SS | 2025-07-15 10:00 | 2025-08-05 12:00 | 15.25d | 2d | 0d |  |  | Luis Sousa; Hany Morcos | 240h | 13,050 | 13,050 |
| 30 | 4.3 | **1st Pages review** |  | 30d | 2025-08-05 13:00 | 2025-09-16 12:00 | 29 | 2025-08-05 13:00 | 2025-09-16 12:00 | 30d | 2d | 0d |  |  |  | 320h | 13,860 | 13,860 |
| 31 | 4.3.1 | Proofread and index |  | 10d | 2025-08-05 13:00 | 2025-08-19 12:00 |  | 2025-08-05 13:00 | 2025-08-19 12:00 | 10d | 2d | 0d | start no earlier than 2025-07-21 08:00 |  | Tad Orman; Copyeditors | 100h | 900 | 900 |
| 32 | 4.3.2 | Incorporate 1st Pages review |  | 10d | 2025-08-19 13:00 | 2025-09-02 12:00 | 31 | 2025-08-19 13:00 | 2025-09-02 12:00 | 10d | 2d | 0d |  |  | Hany Morcos; Dan Jump [50%] | 120h | 6,120 | 6,120 |
| 33 | 4.3.3 | Send proofed pages to Production | milestone | 0d | 2025-09-02 12:00 | 2025-09-02 12:00 | 32 | 2025-09-02 12:00 | 2025-09-02 12:00 | 0d | 2d | 0d |  |  | Hany Morcos |  |  |  |
| 34 | 4.3.4 | Enter page corrections and index |  | 5d | 2025-09-02 13:00 | 2025-09-09 12:00 | 33 | 2025-09-02 13:00 | 2025-09-09 12:00 | 5d | 2d | 0d |  |  | Jane Dow; Dan Jump [50%] | 60h | 4,040 | 4,040 |
| 35 | 4.3.5 | Cover design |  | 5d | 2025-09-09 13:00 | 2025-09-16 12:00 | 34 | 2025-09-09 13:00 | 2025-09-16 12:00 | 5d | 2d | 0d |  |  | Luis Sousa | 40h | 2,800 | 2,800 |
| 36 | 4.4 | **2nd Pages review** |  | 13d | 2025-09-16 13:00 | 2025-10-03 12:00 |  | 2025-09-16 13:00 | 2025-10-03 12:00 | 13d | 0.5d |  |  |  |  | 120h | 6,345 | 6,345 |
| 37 | 4.4.1 | Proof and review |  | 6.5d | 2025-09-16 13:00 | 2025-09-24 17:00 | 35 | 2025-09-16 13:00 | 2025-09-24 17:00 | 6.5d | 2d | 0d |  |  | Hany Morcos | 40h | 1,800 | 1,800 |
| 38 | 4.4.2 | Send proofed pages to Production | milestone | 0d | 2025-09-24 17:00 | 2025-09-24 17:00 | 37 | 2025-09-24 17:00 | 2025-09-24 17:00 | 0d | 2d | 0d |  |  | Hany Morcos |  |  |  |
| 39 | 4.4.3 | Final review |  | 5d | 2025-09-26 13:00 | 2025-10-03 12:00 | 38 | 2025-09-26 13:00 | 2025-10-03 12:00 | 5d | 0.5d |  |  |  | Jane Dow; Hany Morcos [50%]; Carole Poland [50%]; Advance proofs [20 copies] | 80h | 4,545 | 4,545 |
| 40 | 4.5 | **Design book's companion website** |  | 10d | 2025-09-16 13:00 | 2025-09-30 12:00 | 30 | 2025-09-16 13:00 | 2025-09-30 12:00 | 10d | 3.5d |  |  |  |  | 88h | 5,834 | 5,834 |
| 41 | 4.5.1 | Create mockup |  | 4.5d | 2025-09-16 13:00 | 2025-09-26 12:00 |  | 2025-09-16 13:00 | 2025-09-26 12:00 | 4.5d | 3.5d | 0d |  |  | Luis Sousa; Hany Morcos | 48h | 2,610 | 2,610 |
| 42 | 4.5.2 | Review with author |  | 2d | 2025-09-26 13:00 | 2025-09-30 12:00 | 41 | 2025-09-26 13:00 | 2025-09-30 12:00 | 2d | 3.5d |  |  |  | Luis Sousa; Tad Orman; Travel [0.1%]; Dan Jump [50%] | 40h | 3,224 | 3,224 |
| 43 | 5 | **Color prep and printing** |  | 44d | 2025-10-06 08:00 | 2025-12-04 17:00 | 40 | 2025-10-06 08:00 | 2025-12-04 17:00 | 44d | 0d |  |  |  |  | 328h | 5,310 | 5,310 |
| 44 | 5.1 | Send to color house |  | 1d | 2025-10-06 08:00 | 2025-10-06 17:00 | 36 | 2025-10-06 08:00 | 2025-10-06 17:00 | 1d | 0d |  |  | Mon-Wed Task Calendar | Hany Morcos | 8h | 310 | 310 |
| 45 | 5.2 | Generate proofs |  | 10d | 2025-10-07 08:00 | 2025-10-20 17:00 | 44 | 2025-10-07 08:00 | 2025-10-20 17:00 | 10d | 0d |  |  |  | Color Setting Services | 80h | 5,000 | 5,000 |
| 46 | 5.3 | Print and ship |  | 30d | 2025-10-24 08:00 | 2025-12-04 17:00 | 45FS+3d | 2025-10-24 08:00 | 2025-12-04 17:00 | 30d | 0d |  |  |  | Printing Service | 240h |  |  |
| 47 | 6 | **Book launch prep** |  | 22d | 2025-10-07 08:00 | 2025-11-05 17:00 |  | 2025-10-07 08:00 | 2025-11-05 17:00 | 22d | 21d |  |  |  |  | 212h | 9,442 | 9,442 |
| 48 | 6.1 | Launch planning |  | 5d | 2025-10-07 08:00 | 2025-10-13 17:00 | 44 | 2025-10-07 08:00 | 2025-10-13 17:00 | 5d | 21d | 0d |  |  | Carole Poland [50%]; Jane Dow | 36h | 2,062 | 2,062 |
| 49 | 6.2 | Assign launch team members |  | 1d | 2025-10-14 08:00 | 2025-10-14 17:00 | 48 | 2025-10-14 08:00 | 2025-10-14 17:00 | 1d | 21d | 0d |  |  | Carole Poland | 8h | 420 | 420 |
| 50 | 6.3 | Complete author questionnaire |  | 5d | 2025-10-15 08:00 | 2025-10-21 17:00 | 49 | 2025-10-15 08:00 | 2025-10-21 17:00 | 5d | 21d | 0d |  |  | Hany Morcos; Tad Orman; Travel [0.1%] | 80h | 3,550 | 3,550 |
| 51 | 6.4 | Schedule author interviews |  | 1d | 2025-10-22 08:00 | 2025-10-22 17:00 | 50 | 2025-10-22 08:00 | 2025-10-22 17:00 | 1d | 21d | 0d |  |  | Hany Morcos | 8h | 310 | 310 |
| 52 | 6.5 | Design and order marketing material |  | 10d | 2025-10-23 08:00 | 2025-11-05 17:00 | 51 | 2025-10-23 08:00 | 2025-11-05 17:00 | 10d | 21d |  |  |  | Hany Morcos | 80h | 3,100 | 3,100 |
