# Children's Gourmet Cookbook

Schedule from MS Project, 2025-07-17 to 2025-11-25, status date 2025-06-05, costs in $, A marks actual dates.
Lucerne Publishing

## Calendars

- Standard: Mon-Fri 08:00-12:00, 13:00-17:00; Sat-Sun off.

## Resources

| Resource | Rate |
| --- | --- |
| John Evans | 62 |
| Katie Jordan | 48 |
| Robin Wood | 44 |
| William Flash | 55 |
| Carole Poland | 52.5 |
| Printing Service |  |
| Color Setting Services |  |
| Copyeditors |  |

## Schedule

| ID | WBS | Task | Type | Duration | Start | Finish | Predecessors | Complete | Remaining | Baseline start | Baseline finish | Baseline duration | Total slack | Free slack | Constraint | Resources | Work | Actual work | Cost | Baseline cost | Actual cost |
| --- | --- | --- | --- | --- | --- | --- | --- | --- | --- | --- | --- | --- | --- | --- | --- | --- | --- | --- | --- | --- | --- |
| 1 | 1 | **Acquisition** |  | 42d | 2025-07-17 A | 2025-09-15 A |  | 100% |  | 2025-07-17 | 2025-09-01 | 33d |  |  |  |  | 232h | 232h | 12,180 | 12,180 | 12,180 |
| 2 | 1.1 | Manuscript received | milestone | 0d | 2025-07-17 A | 2025-07-17 A |  | 100% |  | 2025-07-17 | 2025-07-17 | 0d |  |  |  | Carole Poland |  |  |  |  |  |
| 3 | 1.2 | Content edit |  | 29d | 2025-07-23 A | 2025-09-03 A | 2 | 100% |  | 2025-07-21 | 2025-09-01 | 29d |  |  | start no earlier than 2025-07-21 | Carole Poland | 232h | 232h | 12,180 | 12,180 | 12,180 |
| 4 | 1.3 | Handoff to Editorial | milestone | 0d | 2025-09-15 A | 2025-09-15 A | 3 | 100% |  | 2025-09-01 | 2025-09-01 | 0d |  |  |  | Carole Poland |  |  |  |  |  |
| 5 | 2 | **Editorial** |  | 31d | 2025-09-16 A | 2025-10-28 | 1 |  | 31d | 2025-09-02 | 2025-10-13 | 30d | 0d |  |  |  | 248h |  | 3,872 | 3,520 |  |
| 6 | 2.1 | Organize manuscript for copyedit |  | 5d | 2025-09-16 A | 2025-09-22 |  |  | 5d | 2025-09-02 | 2025-09-08 | 5d | 0d |  |  | Robin Wood | 40h |  | 1,760 | 1,760 |  |
| 7 | 2.2 | Copyedit |  | 20d | 2025-09-23 A | 2025-10-20 | 6 |  | 20d | 2025-09-09 | 2025-10-06 | 20d | 0d |  |  | Copyeditors | 160h |  |  |  |  |
| 8 | 2.3 | Copyedit incorp |  | 5d | 2025-10-19 A | 2025-10-27 | 7 |  | 5d | 2025-10-07 | 2025-10-13 | 5d | 0d |  |  | Robin Wood | 40h |  | 1,760 | 1,760 |  |
| 9 | 2.4 | Handoff to Production |  | 1d | 2025-10-24 A | 2025-10-28 | 8 |  | 1d | 2025-10-13 | 2025-10-13 | 0d | 0d |  |  | Robin Wood | 8h |  | 352 |  |  |
| 10 | 3 | **Design and Production** |  | 20d | 2025-09-16 | 2025-10-13 | 5SS |  |  | 2025-09-02 | 2025-09-29 | 20d | 11d |  |  |  | 320h |  | 16,160 | 16,160 |  |
| 11 | 3.1 | Cover design |  | 5d | 2025-09-16 | 2025-09-22 |  |  |  | 2025-09-02 | 2025-09-08 | 5d | 11d | 0d |  | William Flash | 40h |  | 2,200 | 2,200 |  |
| 12 | 3.2 | Set pages |  | 10d | 2025-09-23 | 2025-10-06 | 11 |  |  | 2025-09-09 | 2025-09-22 | 10d | 11d | 0d |  | Robin Wood; Katie Jordan | 160h |  | 7,360 | 7,360 |  |
| 13 | 3.3 | Interior illustration design |  | 15d | 2025-09-23 | 2025-10-13 | 12SS |  |  | 2025-09-09 | 2025-09-29 | 15d | 11d |  |  | William Flash | 120h |  | 6,600 | 6,600 |  |
| 14 | 4 | **Pages review** |  | 20d | 2025-10-29 | 2025-11-25 | 10, 5 |  |  | 2025-10-14 | 2025-11-10 | 20d | 0d |  |  |  | 280h |  | 14,580 | 14,580 |  |
| 15 | 4.1 | Proofread and index |  | 10d | 2025-10-29 | 2025-11-11 |  |  |  | 2025-10-14 | 2025-10-27 | 10d | 0d |  |  | John Evans; Katie Jordan | 160h |  | 8,800 | 8,800 |  |
| 16 | 4.2 | Incorporate 1st Pages review |  | 5d | 2025-11-12 | 2025-11-18 | 15 |  |  | 2025-10-28 | 2025-11-03 | 5d | 0d |  |  | Carole Poland | 40h |  | 2,100 | 2,100 |  |
| 17 | 4.3 | Send proofed pages to Production | milestone | 0d | 2025-11-18 | 2025-11-18 | 16 |  |  | 2025-11-03 | 2025-11-03 | 0d | 0d |  |  | Robin Wood |  |  |  |  |  |
| 18 | 4.4 | Enter page corrections and index |  | 5d | 2025-11-19 | 2025-11-25 | 17 |  |  | 2025-11-04 | 2025-11-10 | 5d | 0d |  |  | Katie Jordan; Robin Wood | 80h |  | 3,680 | 3,680 |  |
| 19 | 4.5 | Send to print service | milestone | 0d | 2025-11-25 | 2025-11-25 | 18 |  |  | 2025-11-10 | 2025-11-10 | 0d | 0d |  |  |  |  |  |  |  |  |
